# CVR Master Program

Schedule from Primavera P6, 2026-08-12 to 2028-05-17, data date 2026-08-12.
Must finish by 2028-05-17

## Calendars

- CVR Standard 5x8: Mon-Fri 08:00-12:00, 13:00-17:00; Sat-Sun off.

## Resources

| Resource | Group |
| --- | --- |
| Bhkti Patel — Engineer III | labor |
| Collin Allen — Graphics Technician | labor |
| Taylor Nelson — Engineer II | labor |
| Kevin Metts — Designer II | labor |
| PLS Procurement | labor |
| Senior PM (starts 8/24) | labor |
| Francis Wagner — Engineer III | labor |
| Roy Pierce — Principal Engineer | labor |
| HWC Construction PM (coordination) | labor |
| Hayley Worthen — Senior Engineer | labor |
| CVR Estimating (per CVR-PROC-001) | labor |
| Substation Engineer (open req) | labor |
| Craig Peterson — Engineer I | labor |
| T-Line Engineer (open req) | labor |
| Randy Pynenberg — Engineer IV | labor |
| Structural Engineer (open req) | labor |
| Auston Hopson — Graphics Technician | labor |

## Schedule

| ID | WBS | Activity | Type | Duration | Start | Finish | Predecessors | Total float | Constraint | Resources |
| --- | --- | --- | --- | --- | --- | --- | --- | --- | --- | --- |
|  | CPE | **CenterPoint Energy — Direct Engineering** |  |  | 2026-08-12 | 2027-11-18 |  |  |  |  |
|  | CPE.GW | **017-0003 Gateway 69kV** |  |  | 2026-08-12 | 2026-09-02 |  |  |  |  |
| GW-CLO |  | Gateway 69kV — final billing & record prints |  | 15d | 2026-08-12 | 2026-09-01 |  | 0d |  | Bhkti Patel — Engineer III [40 h]; Collin Allen — Graphics Technician [24 h] |
| GW-FIN |  | Gateway 69kV complete | milestone | 0d | 2026-09-02 | 2026-09-02 | GW-CLO | 0d |  |  |
|  | CPE.RK | **017-0004 Rockport 69kV** |  |  | 2026-08-12 | 2026-09-02 |  |  |  |  |
| RK-CLO |  | Rockport 69kV — closeout & record prints |  | 15d | 2026-08-12 | 2026-09-01 |  | 0d |  | Bhkti Patel — Engineer III [24 h]; Collin Allen — Graphics Technician [16 h] |
| RK-FIN |  | Rockport 69kV complete | milestone | 0d | 2026-09-02 | 2026-09-02 | RK-CLO | 0d |  |  |
|  | CPE.AM | **017-0005 Angel Mounds 69kV** |  |  | 2026-08-12 | 2026-09-09 |  |  |  |  |
| AM-CLO |  | Angel Mounds — record prints & closeout |  | 20d | 2026-08-12 | 2026-09-08 |  | 0d |  | Taylor Nelson — Engineer II [24 h]; Collin Allen — Graphics Technician [16 h] |
| AM-FIN |  | Angel Mounds complete | milestone | 0d | 2026-09-09 | 2026-09-09 | AM-CLO | 0d |  |  |
|  | CPE.NW | **017-0006 Northwest 69kV Cap Banks** |  |  | 2026-08-12 | 2027-11-11 |  |  |  |  |
| NW-60 |  | Northwest — 60% design (cap banks + protection) |  | 45d | 2026-08-12 | 2026-10-13 |  | 0d |  | Bhkti Patel — Engineer III [220 h]; Kevin Metts — Designer II [160 h]; Collin Allen — Graphics Technician [60 h] |
| NW-90 |  | Northwest — 90% design & CenterPoint review |  | 40d | 2026-10-14 | 2026-12-08 | NW-60 | 0d |  | Bhkti Patel — Engineer III [160 h]; Kevin Metts — Designer II [120 h] |
| NW-IFC |  | Northwest — IFC issued (engineering complete) | milestone | 0d | 2026-12-22 | 2026-12-22 | NW-90 FS+10d | 0d |  |  |
| NW-CB-TRN |  | EOR transmittal to PLS — 69kV capacitor banks |  | 5d | 2026-12-23 | 2026-12-29 | NW-IFC | 0d |  | Bhkti Patel — Engineer III [16 h]; PLS Procurement [8 h] |
| NW-CB-PO |  | PO placed — 69kV capacitor banks |  | 15d | 2026-12-30 | 2027-01-19 | NW-CB-TRN | 0d |  | PLS Procurement [24 h] |
| NW-CB-FAB |  | Fabrication & lead time — 69kV capacitor banks (30 wks) |  | 150d | 2027-01-20 | 2027-08-17 | NW-CB-PO | 0d |  | PLS Procurement [8 h] |
| NW-CB-DLV |  | Delivery on site — 69kV capacitor banks | milestone | 0d | 2027-08-18 | 2027-08-18 | NW-CB-FAB | 0d | finish on 2027-05-03 |  |
| NW-SUP |  | Northwest — construction support & energization |  | 60d | 2027-08-19 | 2027-11-10 | NW-CB-DLV | 0d |  | Bhkti Patel — Engineer III [80 h]; Senior PM (starts 8/24) [60 h] |
| NW-FIN |  | Northwest 69kV complete | milestone | 0d | 2027-11-11 | 2027-11-11 | NW-SUP | 0d |  |  |
|  | CPE.LR | **017-0007 Leonard Rd 69kV Cap Banks** |  |  | 2026-08-12 | 2027-11-18 |  |  |  |  |
| LR-60 |  | Leonard Rd — 60% design (2 cap banks + breaker-and-a-half) |  | 50d | 2026-08-12 | 2026-10-20 |  | 0d |  | Francis Wagner — Engineer III [240 h]; Kevin Metts — Designer II [160 h]; Collin Allen — Graphics Technician [60 h] |
| LR-90 |  | Leonard Rd — 90% design & CenterPoint review |  | 40d | 2026-10-21 | 2026-12-15 | LR-60 | 0d |  | Francis Wagner — Engineer III [160 h]; Kevin Metts — Designer II [120 h] |
| LR-IFC |  | Leonard Rd — IFC issued (engineering complete) | milestone | 0d | 2026-12-29 | 2026-12-29 | LR-90 FS+10d | 0d |  |  |
| LR-CB-TRN |  | EOR transmittal to PLS — 69kV capacitor banks |  | 5d | 2026-12-30 | 2027-01-05 | LR-IFC | 0d |  | Francis Wagner — Engineer III [16 h]; PLS Procurement [8 h] |
| LR-CB-PO |  | PO placed — 69kV capacitor banks |  | 15d | 2027-01-06 | 2027-01-26 | LR-CB-TRN | 0d |  | PLS Procurement [24 h] |
| LR-CB-FAB |  | Fabrication & lead time — 69kV capacitor banks (30 wks) |  | 150d | 2027-01-27 | 2027-08-24 | LR-CB-PO | 0d |  | PLS Procurement [8 h] |
| LR-CB-DLV |  | Delivery on site — 69kV capacitor banks | milestone | 0d | 2027-08-25 | 2027-08-25 | LR-CB-FAB | 0d | finish on 2027-07-06 |  |
| LR-SUP |  | Leonard Rd — construction support & energization |  | 60d | 2027-08-26 | 2027-11-17 | LR-CB-DLV | 0d |  | Francis Wagner — Engineer III [80 h]; Senior PM (starts 8/24) [60 h] |
| LR-FIN |  | Leonard Rd 69kV complete | milestone | 0d | 2027-11-18 | 2027-11-18 | LR-SUP | 0d |  |  |

| ID | WBS | Activity | Type | Duration | Start | Finish | Predecessors | Total float | Constraint | Resources |
| --- | --- | --- | --- | --- | --- | --- | --- | --- | --- | --- |
|  | DTE | **DTE Energy** |  |  | 2026-08-12 | 2028-02-10 |  |  |  |  |
|  | DTE.NB | **001-0003 New Baltimore Conversion (39-WO pilot)** |  |  | 2026-08-12 | 2027-12-03 |  |  |  |  |
| NB-PIL |  | CVR-PROC-001 pilot kickoff (one schedule, one cost picture) |  | 10d | 2026-08-12 | 2026-08-25 |  | 0d |  | Senior PM (starts 8/24) [40 h]; Roy Pierce — Principal Engineer [16 h]; HWC Construction PM (coordination) [16 h] |
| NB-SRP |  | Material surplus triage & BOM-vs-actual reconciliation |  | 30d | 2026-08-12 | 2026-09-22 | NB-PIL SS | 0d |  | Hayley Worthen — Senior Engineer [60 h]; PLS Procurement [60 h]; CVR Estimating (per CVR-PROC-001) [40 h] |
| NB-WO1 |  | WO packages — batch 1 (12 WOs) engineering complete |  | 55d | 2026-08-19 | 2026-11-03 | NB-PIL SS+5d | 0d |  | Hayley Worthen — Senior Engineer [300 h]; Kevin Metts — Designer II [200 h]; Collin Allen — Graphics Technician [120 h] |
| NB-OBK |  | DTE open-book response & cost-per-mile benchmark |  | 25d | 2026-08-26 | 2026-09-29 | NB-SRP SS+10d | 0d |  | Senior PM (starts 8/24) [60 h]; CVR Estimating (per CVR-PROC-001) [60 h]; Roy Pierce — Principal Engineer [20 h] |
| NB-CD-TRN |  | EOR transmittal to PLS — conductor / OPGW / hardware |  | 5d | 2026-11-04 | 2026-11-10 | NB-WO1 | 0d |  | Hayley Worthen — Senior Engineer [16 h]; PLS Procurement [8 h] |
| NB-PL-TRN |  | EOR transmittal to PLS — distribution/transmission poles |  | 5d | 2026-11-04 | 2026-11-10 | NB-WO1 | 0d |  | Hayley Worthen — Senior Engineer [16 h]; PLS Procurement [8 h] |
| NB-WO2 |  | WO packages — batch 2 (14 WOs) engineering complete |  | 55d | 2026-11-04 | 2027-01-19 | NB-WO1 | 0d |  | Hayley Worthen — Senior Engineer [300 h]; Kevin Metts — Designer II [200 h]; Collin Allen — Graphics Technician [120 h] |
| NB-CD-PO |  | PO placed — conductor / OPGW / hardware |  | 15d | 2026-11-11 | 2026-12-01 | NB-CD-TRN | 0d |  | PLS Procurement [24 h] |
| NB-PL-PO |  | PO placed — distribution/transmission poles |  | 15d | 2026-11-11 | 2026-12-01 | NB-PL-TRN | 0d |  | PLS Procurement [24 h] |
| NB-CD-FAB |  | Fabrication & lead time — conductor / OPGW / hardware (16 wks) |  | 80d | 2026-12-02 | 2027-03-23 | NB-CD-PO | 0d |  | PLS Procurement [8 h] |
| NB-PL-FAB |  | Fabrication & lead time — distribution/transmission poles (16 wks) |  | 80d | 2026-12-02 | 2027-03-23 | NB-PL-PO | 0d |  | PLS Procurement [8 h] |
| NB-WO3 |  | WO packages — batch 3 (13 WOs) engineering complete |  | 50d | 2027-01-20 | 2027-03-30 | NB-WO2 | 0d |  | Hayley Worthen — Senior Engineer [260 h]; Kevin Metts — Designer II [180 h]; Collin Allen — Graphics Technician [100 h] |
| NB-CD-DLV |  | Delivery on site — conductor / OPGW / hardware | milestone | 0d | 2027-03-24 | 2027-03-24 | NB-CD-FAB | 0d | finish on 2027-03-15 |  |
| NB-PL-DLV |  | Delivery on site — distribution/transmission poles | milestone | 0d | 2027-03-24 | 2027-03-24 | NB-PL-FAB | 0d | finish on 2027-03-15 |  |
| NB-IFC |  | New Baltimore — all 39 WOs IFC (engineering complete) | milestone | 0d | 2027-03-31 | 2027-03-31 | NB-WO3 | 0d |  |  |
| NB-CON |  | Spring 2027 construction start (HWC) | milestone | 0d | 2027-04-01 | 2027-04-01 | NB-PL-DLV, NB-CD-DLV | 0d | finish on 2027-04-01 |  |
| NB-SUP |  | Construction support — 2027 season |  | 175d | 2027-04-02 | 2027-12-02 | NB-CON | 0d |  | Hayley Worthen — Senior Engineer [300 h]; Senior PM (starts 8/24) [350 h]; Kevin Metts — Designer II [120 h] |
| NB-FIN |  | New Baltimore complete | milestone | 0d | 2027-12-03 | 2027-12-03 | NB-SUP | 0d |  |  |
|  | DTE.CT | **001-0001 Catalina Ph 3 — Support Tail** |  |  | 2026-08-12 | 2026-12-23 |  |  |  |  |
| CT-SUP |  | Catalina Ph 3 — construction support tail |  | 95d | 2026-08-12 | 2026-12-22 |  | 0d |  | Hayley Worthen — Senior Engineer [120 h] |
| CT-FIN |  | Catalina Ph 3 complete | milestone | 0d | 2026-12-23 | 2026-12-23 | CT-SUP | 0d |  |  |
|  | DTE.RN | **Renaissance 345kV — 6 MOD Switches (bid)** |  |  | 2026-08-12 | 2028-02-10 |  |  |  |  |
| RN-BID |  | Renaissance 345kV — bid preparation & submittal |  | 24d | 2026-08-12 | 2026-09-14 |  | 0d |  | Roy Pierce — Principal Engineer [60 h]; CVR Estimating (per CVR-PROC-001) [80 h]; Substation Engineer (open req) [40 h] |
| RN-AWD |  | Award (assumed) | milestone | 0d | 2026-11-02 | 2026-11-02 | RN-BID | 0d | finish on 2026-11-02 |  |
| RN-DSN |  | MOD switch replacement design — 60/90/IFC |  | 65d | 2026-11-03 | 2027-02-01 | RN-AWD | 0d |  | Substation Engineer (open req) [320 h]; Kevin Metts — Designer II [160 h]; Roy Pierce — Principal Engineer [40 h] |
| RN-IFC |  | Renaissance — IFC issued (engineering complete) | milestone | 0d | 2027-02-02 | 2027-02-02 | RN-DSN | 0d |  |  |
| RN-MS-TRN |  | EOR transmittal to PLS — 345kV MOD switches (6) |  | 5d | 2027-02-03 | 2027-02-09 | RN-IFC | 0d |  | Substation Engineer (open req) [16 h]; PLS Procurement [8 h] |
| RN-MS-PO |  | PO placed — 345kV MOD switches (6) |  | 15d | 2027-02-10 | 2027-03-02 | RN-MS-TRN | 0d |  | PLS Procurement [24 h] |
| RN-MS-FAB |  | Fabrication & lead time — 345kV MOD switches (6) (40 wks) |  | 200d | 2027-03-03 | 2027-12-07 | RN-MS-PO | 0d |  | PLS Procurement [8 h] |
| RN-MS-DLV |  | Delivery on site — 345kV MOD switches (6) | milestone | 0d | 2027-12-08 | 2027-12-08 | RN-MS-FAB | 0d | finish on 2027-09-01 |  |
| RN-OUT |  | Fall 2027 outage — switch replacement support |  | 45d | 2027-12-09 | 2028-02-09 | RN-MS-DLV | 0d | finish on 2027-10-01 | Substation Engineer (open req) [120 h]; Senior PM (starts 8/24) [80 h] |
| RN-FIN |  | Renaissance complete | milestone | 0d | 2028-02-10 | 2028-02-10 | RN-OUT | 0d |  |  |

| ID | WBS | Activity | Type | Duration | Start | Finish | Predecessors | Total float | Constraint | Resources |
| --- | --- | --- | --- | --- | --- | --- | --- | --- | --- | --- |
|  | CON | **Consumers Energy** |  |  | 2026-08-12 | 2028-01-21 |  |  |  |  |
|  | CON.HVD | **005-0004 2026 HVD Line Sensors** |  |  | 2026-08-12 | 2026-10-28 |  |  |  |  |
| HV-DEV |  | HVD sensors — record prints & BOM closeout |  | 55d | 2026-08-12 | 2026-10-27 |  | 0d |  | Craig Peterson — Engineer I [160 h]; Collin Allen — Graphics Technician [60 h] |
| HV-FIN |  | HVD Line Sensors complete | milestone | 0d | 2026-10-28 | 2026-10-28 | HV-DEV | 0d |  |  |
|  | CON.PR | **2026 Pole Replacements — EPC w/ HWC (WON)** |  |  | 2026-09-08 | 2028-01-21 |  |  |  |  |
| PR-KO |  | Pole program kickoff with HWC (EPC-paired) |  | 5d | 2026-09-08 | 2026-09-14 |  | 0d | finish on 2026-09-08 | Senior PM (starts 8/24) [24 h]; Roy Pierce — Principal Engineer [8 h]; HWC Construction PM (coordination) [16 h] |
| PR-DSN |  | Design packages — 168 poles (staking, framing, guying) |  | 70d | 2026-09-15 | 2026-12-21 | PR-KO | 0d |  | T-Line Engineer (open req) [400 h]; Craig Peterson — Engineer I [300 h]; Kevin Metts — Designer II [200 h]; Collin Allen — Graphics Technician [100 h] |
| PR-IFC |  | Pole program — IFC issued (engineering complete) | milestone | 0d | 2026-12-22 | 2026-12-22 | PR-DSN | 0d |  |  |
| PR-PL-TRN |  | EOR transmittal to PLS — distribution/transmission poles |  | 5d | 2026-12-23 | 2026-12-29 | PR-IFC | 0d |  | T-Line Engineer (open req) [16 h]; PLS Procurement [8 h] |
| PR-PL-PO |  | PO placed — distribution/transmission poles |  | 15d | 2026-12-30 | 2027-01-19 | PR-PL-TRN | 0d |  | PLS Procurement [24 h] |
| PR-PL-FAB |  | Fabrication & lead time — distribution/transmission poles (16 wks) |  | 80d | 2027-01-20 | 2027-05-11 | PR-PL-PO | 0d |  | PLS Procurement [8 h] |
| PR-PL-DLV |  | Delivery on site — distribution/transmission poles | milestone | 0d | 2027-05-12 | 2027-05-12 | PR-PL-FAB | 0d | finish on 2027-03-01 |  |
| PR-CON |  | HWC construction — 2027 season | milestone | 0d | 2027-05-13 | 2027-05-13 | PR-PL-DLV | 0d | finish on 2027-03-01 |  |
| PR-SUP |  | Construction support & closeout documentation |  | 180d | 2027-05-14 | 2028-01-20 | PR-CON | 0d |  | T-Line Engineer (open req) [200 h]; Craig Peterson — Engineer I [160 h]; Senior PM (starts 8/24) [200 h] |
| PR-FIN |  | Pole Replacement program complete | milestone | 0d | 2028-01-21 | 2028-01-21 | PR-SUP | 0d |  |  |
|  | MEC | **MEC — EPC Support with HWC** |  |  | 2026-08-12 | 2028-05-17 |  |  |  |  |
|  | MEC.SP | **24000168 Sub P GSU & Substation** |  |  | 2026-08-12 | 2026-10-28 |  |  |  |  |
| SP-IFC2 |  | Sub P — Phase 2 IFC comments & final issue |  | 20d | 2026-08-12 | 2026-09-08 |  | 0d |  | Substation Engineer (open req) [80 h]; Kevin Metts — Designer II [40 h] |
| SP-SUP |  | Sub P — construction & energization support |  | 55d | 2026-08-12 | 2026-10-27 | SP-IFC2 SS | 0d |  | Substation Engineer (open req) [100 h]; Randy Pynenberg — Engineer IV [40 h] |
| SP-FIN |  | Sub P GSU complete | milestone | 0d | 2026-10-28 | 2026-10-28 | SP-SUP | 0d |  |  |
|  | MEC.EW | **24000170 Enterprise Way South** |  |  | 2026-08-12 | 2026-09-23 |  |  |  |  |
| EW-ASB |  | Enterprise Way — as-builts & punch list |  | 30d | 2026-08-12 | 2026-09-22 |  | 0d |  | Randy Pynenberg — Engineer IV [60 h]; Collin Allen — Graphics Technician [30 h] |
| EW-FIN |  | Enterprise Way complete | milestone | 0d | 2026-09-23 | 2026-09-23 | EW-ASB | 0d |  |  |
|  | MEC.VM | **VanMeter 161kV Substation + 6mi Line (bid)** |  |  | 2026-08-12 | 2028-05-17 |  |  |  |  |
| VM-BID |  | VanMeter — bid preparation & submittal (with HWC) |  | 17d | 2026-08-12 | 2026-09-03 |  | 0d |  | Roy Pierce — Principal Engineer [60 h]; CVR Estimating (per CVR-PROC-001) [100 h]; Substation Engineer (open req) [60 h]; T-Line Engineer (open req) [40 h] |
| VM-AWD |  | Award (assumed) | milestone | 0d | 2026-10-15 | 2026-10-15 | VM-BID | 0d | finish on 2026-10-15 |  |
| VM-30 |  | VanMeter — 30% design (substation + 6mi 161kV line) |  | 45d | 2026-10-16 | 2026-12-17 | VM-AWD | 0d |  | Substation Engineer (open req) [240 h]; T-Line Engineer (open req) [240 h]; Kevin Metts — Designer II [120 h]; Structural Engineer (open req) [80 h] |
| VM-60 |  | VanMeter — 60% design |  | 45d | 2026-12-18 | 2027-02-18 | VM-30 | 0d |  | Substation Engineer (open req) [240 h]; T-Line Engineer (open req) [240 h]; Kevin Metts — Designer II [160 h]; Structural Engineer (open req) [120 h] |
| VM-90 |  | VanMeter — 90% design & MEC review |  | 40d | 2027-02-19 | 2027-04-15 | VM-60 | 0d |  | Substation Engineer (open req) [200 h]; T-Line Engineer (open req) [200 h]; Kevin Metts — Designer II [120 h] |
| VM-BK-TRN |  | EOR transmittal — HV breakers (early release at 60%) |  | 5d | 2027-02-19 | 2027-02-25 | VM-60 | 0d |  | Substation Engineer (open req) [12 h]; PLS Procurement [8 h] |
| VM-XF-TRN |  | EOR transmittal — 161kV transformer (early release at 60%) |  | 5d | 2027-02-19 | 2027-02-25 | VM-60 | 0d |  | Substation Engineer (open req) [16 h]; PLS Procurement [8 h] |
| VM-BK-PO |  | PO placed — HV breakers |  | 15d | 2027-02-26 | 2027-03-18 | VM-BK-TRN | 0d |  | PLS Procurement [16 h] |
| VM-XF-PO |  | PO placed — 161kV transformer |  | 15d | 2027-02-26 | 2027-03-18 | VM-XF-TRN | 0d |  | PLS Procurement [24 h] |
| VM-BK-FAB |  | Fabrication & lead — HV breakers (38 wks) |  | 190d | 2027-03-19 | 2027-12-09 | VM-BK-PO | 0d |  | PLS Procurement [8 h] |
| VM-XF-FAB |  | Fabrication & lead — 161kV transformer (60 wks) |  | 300d | 2027-03-19 | 2028-05-11 | VM-XF-PO | 0d |  | PLS Procurement [8 h] |
| VM-IFC |  | VanMeter — IFC issued (engineering complete) | milestone | 0d | 2027-04-29 | 2027-04-29 | VM-90 FS+10d | 0d |  |  |
| VM-RL-TRN |  | EOR transmittal to PLS — relay & control panels |  | 5d | 2027-04-30 | 2027-05-06 | VM-IFC | 0d |  | Substation Engineer (open req) [16 h]; PLS Procurement [8 h] |
| VM-ST-TRN |  | EOR transmittal to PLS — substation steel structures |  | 5d | 2027-04-30 | 2027-05-06 | VM-IFC | 0d |  | Substation Engineer (open req) [16 h]; PLS Procurement [8 h] |
| VM-RL-PO |  | PO placed — relay & control panels |  | 15d | 2027-05-07 | 2027-05-27 | VM-RL-TRN | 0d |  | PLS Procurement [24 h] |
| VM-ST-PO |  | PO placed — substation steel structures |  | 15d | 2027-05-07 | 2027-05-27 | VM-ST-TRN | 0d |  | PLS Procurement [24 h] |
| VM-RL-FAB |  | Fabrication & lead time — relay & control panels (26 wks) |  | 130d | 2027-05-28 | 2027-11-25 | VM-RL-PO | 0d |  | PLS Procurement [8 h] |
| VM-ST-FAB |  | Fabrication & lead time — substation steel structures (24 wks) |  | 120d | 2027-05-28 | 2027-11-11 | VM-ST-PO | 0d |  | PLS Procurement [8 h] |
| VM-CON |  | HWC construction start (site/civil) | milestone | 0d | 2027-06-01 | 2027-06-01 | VM-IFC | 0d | finish on 2027-06-01 |  |
| VM-SUP |  | Construction support through energization |  | 250d | 2027-06-02 | 2028-05-16 | VM-CON | 0d |  | Substation Engineer (open req) [300 h]; T-Line Engineer (open req) [200 h]; Senior PM (starts 8/24) [300 h] |
| VM-ST-DLV |  | Delivery on site — substation steel structures | milestone | 0d | 2027-11-12 | 2027-11-12 | VM-ST-FAB | 0d | finish on 2027-10-01 |  |
| VM-RL-DLV |  | Delivery on site — relay & control panels | milestone | 0d | 2027-12-01 | 2027-12-01 | VM-RL-FAB | 0d | finish on 2027-12-01 |  |
| VM-BK-DLV |  | Delivery on site — HV breakers | milestone | 0d | 2027-12-10 | 2027-12-10 | VM-BK-FAB | 0d |  |  |
| VM-XF-DLV |  | Delivery on site — 161kV transformer | milestone | 0d | 2028-05-12 | 2028-05-12 | VM-XF-FAB | 0d | finish on 2028-03-01 |  |
| VM-FIN |  | VanMeter complete | milestone | 0d | 2028-05-17 | 2028-05-17 | VM-SUP, VM-XF-DLV | 0d |  |  |

| ID | WBS | Activity | Type | Duration | Start | Finish | Predecessors | Total float | Constraint | Resources |
| --- | --- | --- | --- | --- | --- | --- | --- | --- | --- | --- |
|  | CLV | **016-0001 Cloverland — Manistique Closeout** |  |  | 2026-08-12 | 2026-09-23 |  |  |  |  |
| CL-CLO |  | Manistique — record prints & final closeout |  | 30d | 2026-08-12 | 2026-09-22 |  | 0d |  | Taylor Nelson — Engineer II [60 h]; Collin Allen — Graphics Technician [24 h] |
| CL-FIN |  | Manistique complete | milestone | 0d | 2026-09-23 | 2026-09-23 | CL-CLO | 0d |  |  |
|  | PIPE | **Pending Pipeline (contingent on award)** |  |  | 2026-10-01 | 2027-11-12 |  |  |  |  |
| PP-FMR |  | Steuben Frontier Make Ready — 10 packages (on award) |  | 90d | 2026-10-01 | 2027-02-03 |  | 0d | finish on 2026-10-01 | Craig Peterson — Engineer I [300 h]; Auston Hopson — Graphics Technician [200 h] |
| PP-LBW |  | Lansing BWL Joint Use Audit — execution (on award, assumed Q4-26) |  | 260d | 2026-11-16 | 2027-11-12 |  | 0d | finish on 2026-11-16 | T-Line Engineer (open req) [800 h]; Craig Peterson — Engineer I [600 h]; Auston Hopson — Graphics Technician [400 h] |
| PP-JG |  | Hoosier Jacksonburg–Gateway — engineering (on award) |  | 120d | 2026-12-01 | 2027-05-17 |  | 0d | finish on 2026-12-01 | T-Line Engineer (open req) [300 h]; Kevin Metts — Designer II [160 h] |
| PP-RR |  | Hoosier Rosehill–Rockport — engineering (on award) |  | 140d | 2027-01-04 | 2027-07-16 |  | 0d | finish on 2027-01-04 | T-Line Engineer (open req) [360 h]; Kevin Metts — Designer II [200 h] |
|  | GOV | **Program Governance & Operating Rhythm** |  |  | 2026-08-17 | 2027-12-24 |  |  |  |  |
| GV-MO |  | Monthly close / KPI / forecast cadence (through 2027) |  | 355d | 2026-08-17 | 2027-12-24 |  | 0d | finish on 2026-08-17 | Senior PM (starts 8/24) [200 h]; Roy Pierce — Principal Engineer [100 h] |
| GV-QAQ |  | Stand up design QA/QC review gates |  | 15d | 2026-08-17 | 2026-09-04 |  | 0d | finish on 2026-08-17 | Roy Pierce — Principal Engineer [40 h]; Hayley Worthen — Senior Engineer [24 h] |
| GV-P6 |  | P6 master schedule live — baseline set, weekly update cadence |  | 10d | 2026-08-24 | 2026-09-04 |  | 0d | finish on 2026-08-24 | Senior PM (starts 8/24) [60 h] |
| GV-EST |  | Estimating transition into CVR (on Decision 2) |  | 45d | 2026-09-01 | 2026-11-02 |  | 0d | finish on 2026-09-01 | Roy Pierce — Principal Engineer [60 h]; CVR Estimating (per CVR-PROC-001) [120 h]; Senior PM (starts 8/24) [40 h] |
