# CVR Pursuits — Estimating Pipeline

Schedule from Primavera P6, 2026-08-12 to 2027-12-29, data date 2026-08-12.
Must finish by 2027-12-29

## Calendars

- CVR Standard 5x8: Mon-Fri 08:00-12:00, 13:00-17:00; Sat-Sun off.

## Resources

| Resource | Group |
| --- | --- |
| Frank Miller — Director of Estimating | labor |
| Roy Pierce — Principal Engineer | labor |
| Substation Engineer (open req) | labor |
| Kevin Metts — Designer II | labor |
| Estimator 1 (placeholder — name on transition) | labor |
| PLS Procurement | labor |
| HWC Construction PM (coordination) | labor |
| Estimator 2 (placeholder — name on transition) | labor |
| T-Line Engineer (open req) | labor |
| Estimator 3 (placeholder — name on transition) | labor |
| Senior PM (starts 8/24) | labor |

## Schedule

| ID | WBS | Activity | Type | Duration | Start | Finish | Predecessors | Total float | Constraint | Resources |
| --- | --- | --- | --- | --- | --- | --- | --- | --- | --- | --- |
|  | ACT | **Active Estimates (in development)** |  |  | 2026-08-12 | 2026-09-09 |  |  |  |  |
|  | ACT.VM | **MEC VanMeter 161kV — EPC-paired (due 9/4)** |  |  | 2026-08-12 | 2026-09-09 |  |  |  |  |
| VM-GNG |  | VanMeter 161kV + 6mi line — bid/no-bid gate & scope review |  | 2d | 2026-08-12 | 2026-08-13 |  | 0d |  | Frank Miller — Director of Estimating [8 h]; Roy Pierce — Principal Engineer [4 h] |
| VM-ENG |  | VanMeter 161kV + 6mi line — engineering basis for estimate (~60% definition) |  | 8d | 2026-08-14 | 2026-08-25 | VM-GNG | 0d |  | Substation Engineer (open req) [60 h]; Kevin Metts — Designer II [24 h] |
| VM-TKO |  | VanMeter 161kV + 6mi line — quantity takeoffs & material pricing |  | 6d | 2026-08-19 | 2026-08-26 | VM-ENG SS+3d | 0d |  | Estimator 1 (placeholder — name on transition) [40 h]; PLS Procurement [12 h] |
| VM-CON |  | VanMeter 161kV + 6mi line — HWC constructability & production-rate review |  | 4d | 2026-08-27 | 2026-09-01 | VM-TKO | 0d |  | HWC Construction PM (coordination) [16 h]; Estimator 1 (placeholder — name on transition) [12 h] |
| VM-PRC |  | VanMeter 161kV + 6mi line — pricing assembly & margin review |  | 4d | 2026-09-02 | 2026-09-07 | VM-CON, VM-ENG | 0d |  | Estimator 1 (placeholder — name on transition) [24 h]; Frank Miller — Director of Estimating [12 h] |
| VM-GTE |  | VanMeter 161kV + 6mi line — SVP review gate |  | 1d | 2026-09-08 | 2026-09-08 | VM-PRC | 0d |  | Roy Pierce — Principal Engineer [4 h]; Frank Miller — Director of Estimating [4 h] |
| VM-SUB |  | VanMeter 161kV + 6mi line — SUBMIT BID | milestone | 0d | 2026-09-09 | 2026-09-09 | VM-GTE | 0d | finish on or before 2026-09-04 |  |
|  | ACT.RN | **DTE Renaissance 345kV — EPC-paired (due 9/15)** |  |  | 2026-08-12 | 2026-09-09 |  |  |  |  |
| RN-GNG |  | Renaissance 345kV MOD switches — bid/no-bid gate & scope review |  | 2d | 2026-08-12 | 2026-08-13 |  | 0d |  | Frank Miller — Director of Estimating [8 h]; Roy Pierce — Principal Engineer [4 h] |
| RN-ENG |  | Renaissance 345kV MOD switches — engineering basis for estimate (~60% definition) |  | 8d | 2026-08-14 | 2026-08-25 | RN-GNG | 0d |  | Substation Engineer (open req) [40 h]; Kevin Metts — Designer II [16 h] |
| RN-TKO |  | Renaissance 345kV MOD switches — quantity takeoffs & material pricing |  | 6d | 2026-08-19 | 2026-08-26 | RN-ENG SS+3d | 0d |  | Estimator 2 (placeholder — name on transition) [40 h]; PLS Procurement [12 h] |
| RN-CON |  | Renaissance 345kV MOD switches — HWC constructability & production-rate review |  | 4d | 2026-08-27 | 2026-09-01 | RN-TKO | 0d |  | HWC Construction PM (coordination) [16 h]; Estimator 2 (placeholder — name on transition) [12 h] |
| RN-PRC |  | Renaissance 345kV MOD switches — pricing assembly & margin review |  | 4d | 2026-09-02 | 2026-09-07 | RN-CON, RN-ENG | 0d |  | Estimator 2 (placeholder — name on transition) [24 h]; Frank Miller — Director of Estimating [12 h] |
| RN-GTE |  | Renaissance 345kV MOD switches — SVP review gate |  | 1d | 2026-09-08 | 2026-09-08 | RN-PRC | 0d |  | Roy Pierce — Principal Engineer [4 h]; Frank Miller — Director of Estimating [4 h] |
| RN-SUB |  | Renaissance 345kV MOD switches — SUBMIT BID | milestone | 0d | 2026-09-09 | 2026-09-09 | RN-GTE | 0d | finish on or before 2026-09-15 |  |
|  | SUB | **Submitted — Pending Award** |  |  | 2026-09-16 | 2026-11-30 |  |  |  |  |
| FMR-FLW |  | Steuben Frontier Make Ready ($100K CVR) — award follow-up & clarifications |  | 3d | 2026-09-16 | 2026-09-18 |  | 0d | finish on 2026-09-16 | Frank Miller — Director of Estimating [8 h]; Roy Pierce — Principal Engineer [4 h] |
| FMR-AWD |  | Steuben Frontier Make Ready ($100K CVR) — award decision (expected) | milestone | 0d | 2026-09-30 | 2026-09-30 | FMR-FLW | 0d | finish on 2026-09-30 |  |
| JG-FLW |  | Hoosier Jacksonburg–Gateway ($160K CVR / $3.55M EPC) — award follow-up & clarifications |  | 3d | 2026-11-02 | 2026-11-04 |  | 0d | finish on 2026-11-02 | Frank Miller — Director of Estimating [8 h]; Roy Pierce — Principal Engineer [4 h] |
| RR-FLW |  | Hoosier Rosehill–Rockport ($290K CVR / $5.59M EPC) — award follow-up & clarifications |  | 3d | 2026-11-02 | 2026-11-04 |  | 0d | finish on 2026-11-02 | Frank Miller — Director of Estimating [8 h]; Roy Pierce — Principal Engineer [4 h] |
| JG-AWD |  | Hoosier Jacksonburg–Gateway ($160K CVR / $3.55M EPC) — award decision (expected) | milestone | 0d | 2026-11-16 | 2026-11-16 | JG-FLW | 0d | finish on 2026-11-16 |  |
| LBW-FLW |  | Lansing BWL Joint Use Audit ($1,350K CVR) — award follow-up & clarifications |  | 3d | 2026-11-16 | 2026-11-18 |  | 0d | finish on 2026-11-16 | Frank Miller — Director of Estimating [8 h]; Roy Pierce — Principal Engineer [4 h] |
| RR-AWD |  | Hoosier Rosehill–Rockport ($290K CVR / $5.59M EPC) — award decision (expected) | milestone | 0d | 2026-11-16 | 2026-11-16 | RR-FLW | 0d | finish on 2026-11-16 |  |
| LBW-AWD |  | Lansing BWL Joint Use Audit ($1,350K CVR) — award decision (expected) | milestone | 0d | 2026-11-30 | 2026-11-30 | LBW-FLW | 0d | finish on 2026-11-30 |  |

| ID | WBS | Activity | Type | Duration | Start | Finish | Predecessors | Total float | Constraint | Resources |
| --- | --- | --- | --- | --- | --- | --- | --- | --- | --- | --- |
|  | TMP | **Pursuit Templates (copy in P6 per new estimate)** |  |  | 2027-12-01 | 2027-12-29 |  |  |  |  |
|  | TMP.EPC | **TEMPLATE — EPC-paired pursuit** |  |  | 2027-12-01 | 2027-12-29 |  |  |  |  |
| TE-GNG |  | [TEMPLATE] EPC-paired estimate — bid/no-bid gate & scope review |  | 2d | 2027-12-01 | 2027-12-02 |  | 0d | finish on 2027-12-01 | Frank Miller — Director of Estimating [8 h]; Roy Pierce — Principal Engineer [4 h] |
| TE-ENG |  | [TEMPLATE] EPC-paired estimate — engineering basis for estimate (~60% definition) |  | 8d | 2027-12-03 | 2027-12-14 | TE-GNG | 0d |  | Substation Engineer (open req) [60 h]; Kevin Metts — Designer II [24 h] |
| TE-TKO |  | [TEMPLATE] EPC-paired estimate — quantity takeoffs & material pricing |  | 6d | 2027-12-08 | 2027-12-15 | TE-ENG SS+3d | 0d |  | Estimator 1 (placeholder — name on transition) [40 h]; PLS Procurement [12 h] |
| TE-CON |  | [TEMPLATE] EPC-paired estimate — HWC constructability & production-rate review |  | 4d | 2027-12-16 | 2027-12-21 | TE-TKO | 0d |  | HWC Construction PM (coordination) [16 h]; Estimator 1 (placeholder — name on transition) [12 h] |
| TE-PRC |  | [TEMPLATE] EPC-paired estimate — pricing assembly & margin review |  | 4d | 2027-12-22 | 2027-12-27 | TE-CON, TE-ENG | 0d |  | Estimator 1 (placeholder — name on transition) [24 h]; Frank Miller — Director of Estimating [12 h] |
| TE-GTE |  | [TEMPLATE] EPC-paired estimate — SVP review gate |  | 1d | 2027-12-28 | 2027-12-28 | TE-PRC | 0d |  | Roy Pierce — Principal Engineer [4 h]; Frank Miller — Director of Estimating [4 h] |
| TE-SUB |  | [TEMPLATE] EPC-paired estimate — SUBMIT BID | milestone | 0d | 2027-12-29 | 2027-12-29 | TE-GTE | 0d |  |  |
|  | TMP.ENG | **TEMPLATE — Engineering-only pursuit** |  |  | 2027-12-01 | 2027-12-23 |  |  |  |  |
| TN-GNG |  | [TEMPLATE] engineering-only estimate — bid/no-bid gate & scope review |  | 2d | 2027-12-01 | 2027-12-02 |  | 0d | finish on 2027-12-01 | Frank Miller — Director of Estimating [8 h]; Roy Pierce — Principal Engineer [4 h] |
| TN-ENG |  | [TEMPLATE] engineering-only estimate — engineering basis for estimate (~60% definition) |  | 8d | 2027-12-03 | 2027-12-14 | TN-GNG | 0d |  | T-Line Engineer (open req) [40 h]; Kevin Metts — Designer II [16 h] |
| TN-TKO |  | [TEMPLATE] engineering-only estimate — quantity takeoffs & material pricing |  | 6d | 2027-12-08 | 2027-12-15 | TN-ENG SS+3d | 0d |  | Estimator 2 (placeholder — name on transition) [40 h]; PLS Procurement [12 h] |
| TN-PRC |  | [TEMPLATE] engineering-only estimate — pricing assembly & margin review |  | 4d | 2027-12-16 | 2027-12-21 | TN-TKO, TN-ENG | 0d |  | Estimator 2 (placeholder — name on transition) [24 h]; Frank Miller — Director of Estimating [12 h] |
| TN-GTE |  | [TEMPLATE] engineering-only estimate — SVP review gate |  | 1d | 2027-12-22 | 2027-12-22 | TN-PRC | 0d |  | Roy Pierce — Principal Engineer [4 h]; Frank Miller — Director of Estimating [4 h] |
| TN-SUB |  | [TEMPLATE] engineering-only estimate — SUBMIT BID | milestone | 0d | 2027-12-23 | 2027-12-23 | TN-GTE | 0d |  |  |
|  | TMP.PRG | **TEMPLATE — Program / audit pursuit** |  |  | 2027-12-01 | 2027-12-29 |  |  |  |  |
| TP-GNG |  | [TEMPLATE] program pursuit — qualification & scope |  | 5d | 2027-12-01 | 2027-12-07 |  | 0d | finish on 2027-12-01 | Frank Miller — Director of Estimating [12 h]; Roy Pierce — Principal Engineer [8 h] |
| TP-EST |  | [TEMPLATE] program pursuit — basis of estimate & unit rates |  | 10d | 2027-12-08 | 2027-12-21 | TP-GNG | 0d |  | Estimator 3 (placeholder — name on transition) [60 h]; T-Line Engineer (open req) [24 h] |
| TP-PRC |  | [TEMPLATE] program pursuit — pricing & terms |  | 5d | 2027-12-22 | 2027-12-28 | TP-EST | 0d |  | Estimator 3 (placeholder — name on transition) [24 h]; Frank Miller — Director of Estimating [12 h] |
| TP-SUB |  | [TEMPLATE] program pursuit — SUBMIT | milestone | 0d | 2027-12-29 | 2027-12-29 | TP-PRC | 0d |  |  |
|  | OPS | **Estimating Operations & Transition** |  |  | 2026-08-17 | 2027-12-17 |  |  |  |  |
| OP-WKL |  | Weekly pursuit review cadence (P6-driven, through 2027) |  | 350d | 2026-08-17 | 2027-12-17 |  | 0d | finish on 2026-08-17 | Frank Miller — Director of Estimating [150 h]; Roy Pierce — Principal Engineer [70 h]; Senior PM (starts 8/24) [70 h] |
| OP-TRN |  | Estimating transition into CVR (on Decision 2) — people, tools, files |  | 45d | 2026-09-01 | 2026-11-02 |  | 0d | finish on 2026-09-01 | Frank Miller — Director of Estimating [80 h]; Roy Pierce — Principal Engineer [40 h]; Senior PM (starts 8/24) [24 h] |
| OP-LOG |  | Load estimating backlog from Excel into this project (intake sheet) |  | 10d | 2026-09-08 | 2026-09-21 | OP-TRN SS+5d | 0d |  | Frank Miller — Director of Estimating [24 h]; Senior PM (starts 8/24) [16 h] |
